# KiwiTeam_Software

Schedule from MS Project, 2015-01-21 to 2015-05-15, status date 2015-01-21, costs in $, A marks actual dates.
UPRM, Mayaguez Campus

## Calendars

- Standard: Mon-Fri 08:00-12:00, 13:00-17:00; Sat-Sun off.

## Resources

| Resource | Rate |
| --- | --- |
| Jose A. Virella Velazquez | 25 |
| Luis M. Tavarez Arce | 24.17 |
| Lexter L. Seda Sanchez | 24.17 |

## Schedule

| ID | WBS | Task | Duration | Start | Finish | Predecessors | Complete | Remaining | Total slack | Free slack | Deadline | Resources | Work | Actual work | Cost | Actual cost |
| --- | --- | --- | --- | --- | --- | --- | --- | --- | --- | --- | --- | --- | --- | --- | --- | --- |
| 1 | 1 | **System Specification** | 14d | 2015-01-21 A | 2015-02-09 A |  | 100% |  |  |  |  |  | 132h | 132h | 3,225.3 | 3,225.3 |
| 2 | 1.1 | Definition of Needs | 6d | 2015-01-21 A | 2015-01-28 A |  | 100% |  |  |  |  | Jose A. Virella Velazquez [25%]; Luis M. Tavarez Arce [25%]; Lexter L. Seda Sanchez [25%] | 24h | 24h | 585.06 | 585.06 |
| 3 | 1.2 | Concept Development | 3d | 2015-01-21 A | 2015-01-23 A | 2SS | 100% |  |  |  |  | Jose A. Virella Velazquez [25%]; Luis M. Tavarez Arce [25%]; Lexter L. Seda Sanchez [25%] | 18h | 18h | 440.04 | 440.04 |
| 4 | 1.3 | System requirements Assessment | 4d | 2015-01-26 A | 2015-01-29 A | 3 | 100% |  |  |  |  | Jose A. Virella Velazquez [25%]; Luis M. Tavarez Arce [25%]; Lexter L. Seda Sanchez [25%] | 24h | 24h | 586.72 | 586.72 |
| 5 | 1.4 | Specs Document elaboration | 5d | 2015-01-26 A | 2015-01-30 A | 4SS | 100% |  |  |  |  | Jose A. Virella Velazquez [25%]; Luis M. Tavarez Arce [25%]; Lexter L. Seda Sanchez [25%] | 30h | 30h | 733.4 | 733.4 |
| 6 | 1.5 | Negotiation with client | 1w | 2015-02-02 A | 2015-02-06 A | 5 | 100% |  |  |  |  | Jose A. Virella Velazquez [25%]; Luis M. Tavarez Arce [25%]; Lexter L. Seda Sanchez [25%] | 30h | 30h | 733.4 | 733.4 |
| 7 | 1.6 | Contract | 1d | 2015-02-09 A | 2015-02-09 A | 6 | 100% |  |  |  | 2015-02-09 | Jose A. Virella Velazquez [25%]; Luis M. Tavarez Arce [25%]; Lexter L. Seda Sanchez [25%] | 6h | 6h | 146.68 | 146.68 |
| 8 | 2 | **System Design** | 15d | 2015-02-10 A | 2015-03-02 A | 7 | 100% |  |  |  | 2015-03-03 |  | 165.2h | 165.2h | 4,036.04 | 4,036.04 |
| 9 | 2.1 | Analysis of alternatives | 3d | 2015-02-10 A | 2015-02-12 A |  | 100% |  |  |  |  | Jose A. Virella Velazquez [25%]; Luis M. Tavarez Arce [25%]; Lexter L. Seda Sanchez [25%] | 18h | 18h | 440.04 | 440.04 |
| 10 | 2.2 | System architecture | 8d | 2015-02-10 A | 2015-02-19 A | 9SS | 100% |  |  |  |  | Jose A. Virella Velazquez [10%]; Luis M. Tavarez Arce [10%]; Lexter L. Seda Sanchez [10%] | 33.6h | 33.6h | 821.41 | 821.41 |
| 11 | 2.3 | Interface definition | 2d | 2015-02-13 A | 2015-02-16 A | 9 | 100% |  |  |  |  | Jose A. Virella Velazquez [30%]; Luis M. Tavarez Arce [30%]; Lexter L. Seda Sanchez [30%] | 14.4h | 14.4h | 352.03 | 352.03 |
| 12 | 2.4 | Detail Design of Android App GUI | 6d | 2015-02-17 A | 2015-02-24 A | 11 | 100% |  |  |  |  | Luis M. Tavarez Arce [30%]; Lexter L. Seda Sanchez [25%] | 20.4h | 20.4h | 493.07 | 493.07 |
| 13 | 2.5 | Detail Design of Android App Logic | 6d | 2015-02-20 A | 2015-02-27 A | 12FS-3d | 100% |  |  |  |  | Luis M. Tavarez Arce [30%]; Jose A. Virella Velazquez [20%] | 20.4h | 20.4h | 498.05 | 498.05 |
| 14 | 2.6 | Detal Design of Web Application Front-End | 6d | 2015-02-17 A | 2015-02-24 A | 11 | 100% |  |  |  |  | Jose A. Virella Velazquez [25%]; Lexter L. Seda Sanchez [25%] | 18h | 18h | 445.02 | 445.02 |
| 15 | 2.7 | Detail Design of Web Application Logic | 6d | 2015-02-20 A | 2015-02-27 A | 14FS-3d | 100% |  |  |  |  | Jose A. Virella Velazquez [30%]; Luis M. Tavarez Arce [15%] | 17.2h | 17.2h | 424.02 | 424.02 |
| 16 | 2.8 | Database Server Design | 7d | 2015-02-17 A | 2015-02-25 A | 11 | 100% |  |  |  |  | Lexter L. Seda Sanchez [25%]; Luis M. Tavarez Arce [15%] | 17.2h | 17.2h | 415.72 | 415.72 |
| 17 | 2.9 | Design Acceptance | 1d | 2015-03-02 A | 2015-03-02 A | 15, 12, 13, 14, 16 | 100% |  |  |  |  | Jose A. Virella Velazquez [25%]; Luis M. Tavarez Arce [25%]; Lexter L. Seda Sanchez [25%] | 6h | 6h | 146.68 | 146.68 |
| 18 | 3 | **Implementation** | 11d | 2015-03-03 A | 2015-03-17 | 17 | 37% | 6.95d | 43d |  |  |  | 129.2h | 51.72h | 3,156.96 | 1,262.66 |
| 19 | 3.1 | Implementation of Android GUI | 10d | 2015-03-03 A | 2015-03-16 | 12 | 30% | 7d | 1d | 0d |  | Luis M. Tavarez Arce [20%]; Lexter L. Seda Sanchez [10%] | 24h | 7.2h | 580.08 | 174.02 |
| 20 | 3.2 | Implementation of Android Logic | 10d | 2015-03-03 A | 2015-03-16 | 13 | 30% | 7d | 1d | 0d |  | Luis M. Tavarez Arce [15%]; Jose A. Virella Velazquez [10%] | 20h | 6h | 490.04 | 147.01 |
| 21 | 3.3 | Implementation of Website Front-End | 10d | 2015-03-03 A | 2015-03-16 | 14 | 30% | 7d | 1d | 0d |  | Jose A. Virella Velazquez [15%]; Lexter L. Seda Sanchez [15%] | 22.8h | 7.2h | 561.04 | 177.01 |
| 22 | 3.4 | Implementation of Website Logic | 11d | 2015-03-03 A | 2015-03-17 | 15 | 30% | 7.7d | 0d |  |  | Jose A. Virella Velazquez [15%]; Luis M. Tavarez Arce [15%] | 26.4h | 7.92h | 649.04 | 194.71 |
| 23 | 3.5 | Implementation of Database Server | 10d | 2015-03-03 A | 2015-03-16 | 16 | 65% | 3.5d | 44d |  |  | Lexter L. Seda Sanchez [20%]; Luis M. Tavarez Arce [15%]; Jose A. Virella Velazquez [10%] | 36h | 23.4h | 876.76 | 569.89 |
| 24 | 4 | **Unit Testing & Refining** | 11d | 2015-03-17 | 2015-03-31 |  |  |  | 0d |  | 2015-04-06 |  | 79.6h |  | 1,947.84 |  |
| 25 | 4.1 | Testing Android GUI | 5d | 2015-03-17 | 2015-03-23 | 19 |  |  | 1d |  |  | Luis M. Tavarez Arce [25%]; Lexter L. Seda Sanchez [15%] | 14.8h |  | 357.72 |  |
| 26 | 4.2 | Testing Android Logic | 5d | 2015-03-17 | 2015-03-23 | 20 |  |  | 1d |  |  | Luis M. Tavarez Arce [25%]; Jose A. Virella Velazquez [15%] | 14.8h |  | 361.7 |  |
| 27 | 4.3 | Testing Website Front-End | 5d | 2015-03-17 | 2015-03-23 | 21 |  |  | 1d |  |  | Jose A. Virella Velazquez [20%]; Lexter L. Seda Sanchez [20%] | 16h |  | 393.36 |  |
| 28 | 4.4 | Testing Website Logic | 5d | 2015-03-18 | 2015-03-24 | 22 |  |  | 0d |  |  | Jose A. Virella Velazquez [25%]; Luis M. Tavarez Arce [15%] | 16h |  | 395.02 |  |
| 29 | 4.5 | Testing Database Server | 5d | 2015-03-25 | 2015-03-31 | 25, 26, 27, 28 |  |  | 0d |  |  | Jose A. Virella Velazquez [15%]; Lexter L. Seda Sanchez [15%]; Luis M. Tavarez Arce [15%] | 18h |  | 440.04 |  |

| ID | WBS | Task | Duration | Start | Finish | Predecessors | Total slack | Deadline | Resources | Work | Cost |
| --- | --- | --- | --- | --- | --- | --- | --- | --- | --- | --- | --- |
| 30 | 5 | **System Integration** | 16d | 2015-04-01 | 2015-04-22 | 24 | 0d |  |  | 108.8h | 2,658.25 |
| 31 | 5.1 | Integration of Android GUI and Logic | 5d | 2015-04-01 | 2015-04-07 | 25, 26 | 0d |  | Luis M. Tavarez Arce [30%]; Lexter L. Seda Sanchez [20%] | 20h | 483.4 |
| 32 | 5.2 | Integration of Website Front-End and Logic | 5d | 2015-04-01 | 2015-04-07 | 26, 27 | 0d |  | Jose A. Virella Velazquez [40%]; Lexter L. Seda Sanchez [20%] | 24h | 593.36 |
| 33 | 5.3 | Integration of Database with Android App | 3d | 2015-04-08 | 2015-04-10 | 29, 31 | 0d |  | Lexter L. Seda Sanchez [25%]; Luis M. Tavarez Arce [15%] | 9.6h | 232.03 |
| 34 | 5.4 | Integration of Database with Website | 3d | 2015-04-08 | 2015-04-10 | 29, 32 | 0d |  |  |  |  |
| 35 | 5.5 | Integration Testing | 3d | 2015-04-13 | 2015-04-15 | 33, 34 | 0d |  | Jose A. Virella Velazquez [60%]; Luis M. Tavarez Arce [60%]; Lexter L. Seda Sanchez [60%] | 43.2h | 1,056.1 |
| 36 | 5.6 | System Demo | 5d | 2015-04-16 | 2015-04-22 | 35 | 0d | 2015-04-27 | Jose A. Virella Velazquez [10%]; Luis M. Tavarez Arce [10%]; Lexter L. Seda Sanchez [10%] | 12h | 293.36 |
| 37 | 6 | **Delivery** | 17d | 2015-04-23 | 2015-05-15 |  | 0d |  |  | 83.76h | 2,047.65 |
| 38 | 6.1 | Deployment on site | 4d | 2015-04-23 | 2015-04-28 | 36 | 0d |  | Jose A. Virella Velazquez [50%]; Luis M. Tavarez Arce [50%]; Lexter L. Seda Sanchez [50%] | 48h | 1,173.44 |
| 39 | 6.2 | Training | 3d | 2015-04-29 | 2015-05-01 | 38 | 0d |  | Jose A. Virella Velazquez [33%]; Luis M. Tavarez Arce [33%]; Lexter L. Seda Sanchez [33%] | 23.76h | 580.85 |
| 40 | 6.3 | Client acceptance | 10d | 2015-05-04 | 2015-05-15 | 39 | 0d | 2015-05-18 | Jose A. Virella Velazquez [5%]; Luis M. Tavarez Arce [5%]; Lexter L. Seda Sanchez [5%] | 12h | 293.36 |
